# WeKeBA

Schedule from MS Project, 2014-09-01 to 2014-12-19, A marks actual dates.
ZHAW

## Calendars

- Standard: Mon-Tue 08:00-12:00, 13:00-17:00; Wed-Sun off.

## Resources

| Resource |
| --- |
| Tobias Keller |
| Tobias Welti |
| Valentin Schlatter |
| extern |

## Schedule

| ID | WBS | Task | Type | Duration | Start | Finish | Predecessors | Complete | Remaining | Total slack | Free slack | Constraint | Resources | Work | Actual work |
| --- | --- | --- | --- | --- | --- | --- | --- | --- | --- | --- | --- | --- | --- | --- | --- |
| 1 | 1 | **Konzept** |  | 11.25d | 2014-09-01 08:00 A | 2014-10-07 10:00 |  | 22% | 8.75d | 18.75d |  |  |  | 12h |  |
| 2 | 1.1 | **Software-Konzept** |  | 11.25d | 2014-09-01 08:00 | 2014-10-07 10:00 |  |  |  | 18.75d |  |  |  | 12h |  |
| 3 | 1.1.1 | Speicherkonzept Datenlogger |  | 6h | 2014-09-01 08:00 | 2014-09-01 15:00 |  |  |  | 28.25d | 10d |  |  |  |  |
| 4 | 1.1.2 | Speicherkonzept Sensoreinheit |  | 4h | 2014-09-01 08:00 | 2014-09-01 12:00 |  |  |  | 28.5d | 10.25d |  |  |  |  |
| 5 | 1.1.3 | Timestamp |  | 2h | 2014-09-30 08:00 | 2014-09-30 10:00 |  |  |  | 18.25d | 0d | start no earlier than 2014-09-30 08:00 |  |  |  |
| 6 | 1.1.4 | Busprotokoll |  | 12h | 2014-09-30 10:00 | 2014-10-06 15:00 | 5 |  |  | 18.25d | 0d |  | Tobias Keller | 12h |  |
| 7 | 1.1.5 | UART-Kommandozeile |  | 4h | 2014-10-06 15:00 | 2014-10-07 10:00 | 6 |  |  | 18.75d | 0d |  |  |  |  |
| 8 | 1.2 | **Hardware-Konzept** |  | 1d | 2014-09-01 08:00 A | 2014-09-01 17:00 A |  | 100% |  |  |  |  |  |  |  |
| 9 | 1.2.1 | Hardware-Konzept |  | 1d | 2014-09-01 08:00 A | 2014-09-01 17:00 A |  | 100% |  |  |  | start no earlier than 2014-09-15 08:00 |  |  |  |
| 10 | 2 | **Software** |  | 18d | 2014-09-01 08:00 A | 2014-10-28 17:00 |  | 11% | 16.08d | 14d |  |  |  | 32.6h | 8.6h |
| 11 | 2.1 | A/D-Wandlung getaktet |  | 6h | 2014-09-15 08:00 A | 2014-09-15 15:00 A | 22 | 100% |  |  |  | start no earlier than 2014-09-15 08:00 | Tobias Keller | 6h | 6h |
| 12 | 2.2 | CAN-Bus in Betrieb nehmen |  | 5h | 2014-09-01 08:00 A | 2014-09-01 14:00 A |  | 100% |  |  |  |  | Tobias Keller | 2.6h | 2.6h |
| 13 | 2.3 | Ereigniserkennung |  | 8h | 2014-09-15 15:00 | 2014-09-16 15:00 | 11 |  |  | 26.25d |  |  | Tobias Welti | 8h |  |
| 14 | 2.4 | Timestamp |  | 4h | 2014-09-30 10:00 | 2014-09-30 15:00 | 5 |  |  | 22.25d |  | start no earlier than 2014-09-30 08:00 |  |  |  |
| 15 | 2.5 | Busprotokoll |  | 24h | 2014-10-06 15:00 | 2014-10-14 15:00 | 6 |  |  | 18.25d |  |  |  |  |  |
| 16 | 2.6 | UART-Kommandozeile |  | 16h | 2014-10-07 10:00 | 2014-10-14 10:00 | 7 |  |  | 18.75d |  |  |  |  |  |
| 17 | 2.7 | Filesystem |  | 8h | 2014-10-20 08:00 | 2014-10-20 17:00 | 5, 3, 4 |  |  | 15d | 1d | start no earlier than 2014-10-20 08:00 | Tobias Keller; Tobias Welti | 16h |  |
| 18 | 2.8 | Speicherung Datenlogger |  | 16h | 2014-10-27 08:00 | 2014-10-28 17:00 | 17 |  |  | 14d |  | start no earlier than 2014-10-27 08:00 |  |  |  |
| 19 | 2.9 | Speicherung Sensoreinheit |  | 16h | 2014-10-27 08:00 | 2014-10-28 17:00 | 17 |  |  | 14d |  | start no earlier than 2014-10-27 08:00 |  |  |  |
| 20 | 3 | **Hardware** |  | 17d | 2014-09-01 08:00 A | 2014-10-27 17:00 |  | 99% | 0d | 0d |  |  |  | 189.8h | 189.8h |
| 21 | 3.1 | Sensor auf Platte montiert | manual | 2h | 2014-09-08 13:00 A | 2014-09-08 15:00 A | 22 | 100% |  |  |  |  | Tobias Keller | 2h | 2h |
| 22 | 3.2 | Sensor anschliessen |  | 4h | 2014-09-08 08:00 A | 2014-09-08 12:00 A |  | 100% |  |  |  |  | Tobias Keller; Tobias Welti | 5h | 5h |
| 23 | 3.3 | CAN-Bus/Transceiver |  | 4h | 2014-09-01 08:00 A | 2014-09-01 12:00 A |  | 100% |  |  |  |  | Tobias Keller | 4h | 4h |
| 24 | 3.4 | SD-Karte anschliessen |  | 1d | 2014-09-02 08:00 A | 2014-09-02 17:00 A |  | 100% |  |  |  |  | Tobias Keller; Tobias Welti | 8h | 8h |
| 25 | 3.5 | MS1: Hardware in Betrieb | milestone, manual | 0d | 2014-09-26 17:00 A | 2014-09-26 17:00 A |  | 100% |  |  |  |  |  |  |  |
| 26 | 3.6 | Gehäuse |  | 3h | 2014-09-29 13:00 A | 2014-09-29 16:00 A | 30 | 100% |  |  |  |  | Tobias Welti | 3h | 3h |
| 27 | 3.7 | Anschlüsse/Stecker |  | 5h | 2014-09-29 16:00 A | 2014-09-30 12:00 A | 26 | 100% |  |  |  |  | Tobias Welti | 5h | 5h |
| 28 | 3.8 | PCB Konzept | manual | 2h | 2014-09-21 08:00 A | 2014-09-21 10:00 A |  | 100% |  |  |  |  | Tobias Welti | 2h | 2h |
| 29 | 3.9 | PCB Schaltplan |  | 2h | 2014-09-29 08:00 A | 2014-09-29 10:00 A | 28 | 100% |  |  |  |  | Tobias Welti | 0.8h | 0.8h |
| 30 | 3.10 | PCB Layout |  | 2h | 2014-09-29 10:00 A | 2014-09-29 12:00 A | 29 | 100% |  |  |  |  | Tobias Welti | 2h | 2h |
| 31 | 3.11 | PCB Printen |  | 9.75d | 2014-09-29 13:00 A | 2014-10-13 10:00 A | 30 | 100% |  |  |  |  | extern | 78h | 78h |
| 32 | 3.12 | PCB Löten |  | 10d | 2014-10-13 10:00 A | 2014-10-27 10:00 A | 31 | 100% |  |  |  |  | extern | 80h | 80h |
| 33 | 3.13 | MS2: Gehäuse/PCB fertig | milestone, manual | 0d | 2014-10-27 17:00 A | 2014-10-27 17:00 |  | 75% | 0d |  |  |  |  |  |  |

| ID | WBS | Task | Type | Duration | Start | Finish | Predecessors | Total slack | Constraint | Resources | Work |
| --- | --- | --- | --- | --- | --- | --- | --- | --- | --- | --- | --- |
| 34 | 4 | **Tester** |  | 6.5d | 2014-09-15 15:00 | 2014-10-07 10:00 |  | 20.75d |  |  |  |
| 35 | 4.1 | Verifizierung |  | 4h | 2014-10-06 15:00 | 2014-10-07 10:00 | 3, 4, 5, 6 | 20.75d |  |  |  |
| 36 | 4.2 | Analog-Generator |  | 4h | 2014-09-15 15:00 | 2014-09-16 10:00 | 11 | 26.75d |  |  |  |
| 37 | 5 | Messung Stromverbrauch |  | 1d? | 2014-12-02 08:00 | 2014-12-02 17:00 |  | 4d | start no earlier than 2014-12-02 08:00 |  |  |
| 38 | 6 | **Dokumentation** |  | 25d | 2014-09-22 08:00 | 2014-12-15 17:00 |  | 1d |  |  | 176h |
| 39 | 6.1 | Pflichtenheft |  | 8h | 2014-09-22 08:00 | 2014-09-22 17:00 |  | 25d | finish no earlier than 2014-09-22 17:00 | Tobias Welti | 8h |
| 40 | 6.2 | Konzept-Doku |  | 8h | 2014-09-30 08:00 | 2014-09-30 17:00 |  | 22d | finish no earlier than 2014-09-30 17:00 | Tobias Welti | 8h |
| 41 | 6.3 | Bericht |  | 10d | 2014-11-11 08:00 | 2014-12-15 17:00 |  | 1d | start no earlier than 2014-11-11 08:00 | Tobias Keller; Tobias Welti | 160h |
| 42 | 7 | MS3: Software fertig | milestone, manual | 0d | 2014-11-29 17:00 | 2014-11-29 17:00 |  |  |  |  |  |
| 43 | 8 | MS4: Testing done | milestone, manual | 0d | 2014-12-16 08:00 | 2014-12-16 08:00 |  |  |  |  |  |
| 44 | 9 | MS5: Doku fertig | milestone, manual | 0d | 2014-12-19 08:00 | 2014-12-19 08:00 |  |  |  |  |  |
